# Practica4_SII

Schedule from ProjectLibre, 2026-09-01 to 2028-01-19.

## Calendars

- Estandar: Mon-Fri 08:00-12:00, 13:00-17:00; Sat-Sun off. Exceptions (off unless hours are given): 2026-10-12, 2026-12-24 to 2026-12-25, 2027-01-01, 2027-01-06.

## Resources

| Resource | Rate |
| --- | --- |
| No Asignado |  |
| Analista | 38.91 |
| Analista en prácticas | 15 |
| Desarrollador | 38.91 |
| Desarrollador en prácticas | 15 |
| Licencias sofware |  |
| Servidores de la empresa |  |
| Tester | 38.91 |

## Schedule

| ID | WBS | Task | Type | Duration | Start | Finish | Predecessors | Constraint | Resources |
| --- | --- | --- | --- | --- | --- | --- | --- | --- | --- |
| 1 | 1 | **Requisitos** |  | 52.99d | 2026-09-01 | 2026-11-13 |  |  |  |
| 2 | 1.1 | Recopilación de requisitos funcionales |  | 22.67d | 2026-09-01 | 2026-10-01 |  |  | Analista en prácticas [25%]; Analista [50%] |
| 3 | 1.2 | Recopilación de requisitos no funcionales |  | 22.75d | 2026-09-01 | 2026-10-01 | 2SS |  | Analista [50%]; Analista en prácticas [25%] |
| 4 | 1.3 | Documentación de requisitos |  | 10.83d | 2026-10-01 | 2026-10-19 | 3, 2 | start no earlier than 2026-10-01 | Analista; Analista en prácticas [50%] |
| 5 | 1.4 | Validación de requisitos por el cliente |  | 19.41d | 2026-10-19 | 2026-11-13 | 4 | start no earlier than 2026-09-22 | Analista; Analista en prácticas [50%] |
| 6 | 1.5 | Requisitos aprobados | milestone | 0d | 2026-11-13 | 2026-11-13 | 5 |  |  |
| 7 | 2 | **Diseño arquitectónico** |  | 57.44d | 2026-11-13 | 2027-02-09 | 5 | start no earlier than 2026-10-06 |  |
| 8 | 2.1 | Definición de tecnologías |  | 18.5d | 2026-11-13 | 2026-12-10 | 5 | start no earlier than 2026-10-06 | Analista; Analista en prácticas [50%]; Desarrollador [10%]; Desarrollador en prácticas [10%] |
| 9 | 2.2 | Diseño de arquitectura |  | 19.47d | 2026-12-10 | 2027-01-12 | 8 | start no earlier than 2026-10-29 | Analista; Analista en prácticas [50%]; Desarrollador [25%]; Desarrollador en prácticas [25%] |
| 10 | 2.3 | Interfaces |  | 19.47d | 2027-01-12 | 2027-02-09 | 9 | start no earlier than 2026-11-19 | Analista; Analista en prácticas [50%]; Desarrollador; Desarrollador en prácticas [25%] |
| 11 | 3 | **Diseño detallado** |  | 44.77d | 2027-02-15 | 2027-04-16 | 10 |  |  |
| 12 | 3.1 | Diseño de base de datos |  | 25d | 2027-02-15 | 2027-03-22 | 10FS+30h |  | Analista [12.5%]; Analista en prácticas [12.5%]; Desarrollador [150%]; Desarrollador en prácticas [25%] |
| 13 | 3.2 | Diagramas de clases y secuencia |  | 21.67d | 2027-02-15 | 2027-03-16 | 12SS |  | Analista [25%]; Analista en prácticas [25%]; Desarrollador [150%]; Desarrollador en prácticas [25%] |
| 14 | 3.3 | Definición de APIs |  | 9.17d | 2027-03-22 | 2027-04-02 | 12, 13 | start no earlier than 2026-12-18 | Analista [50%]; Analista en prácticas [50%]; Desarrollador [300%]; Desarrollador en prácticas [50%] |
| 15 | 3.4 | Diseño de interfaces / wireframes |  | 10.6d | 2027-04-02 | 2027-04-16 | 14 |  | Analista [50%]; Analista en prácticas [50%]; Desarrollador [300%]; Desarrollador en prácticas [50%] |
| 16 | 4 | **Implementación** |  | 146.5d | 2027-04-16 | 2027-11-09 | 15 |  |  |
| 17 | 4.1 | Configuración del entorno |  | 15d | 2027-04-16 | 2027-05-07 | 15 |  | Tester [50%]; Servidores de la empresa; Licencias sofware; Desarrollador [300%]; Desarrollador en prácticas [50%] |
| 18 | 4.2 | Desarrollo de backend |  | 100d | 2027-05-07 | 2027-09-24 | 17 |  | Licencias sofware; Servidores de la empresa; Tester [50%]; Desarrollador [150%]; Desarrollador en prácticas [25%] |
| 19 | 4.3 | Desarrollo de frontend |  | 80d | 2027-05-26 | 2027-09-15 | 18SS+100h |  | Desarrollador [150%]; Desarrollador en prácticas [25%]; Licencias sofware; Servidores de la empresa; Tester [50%] |
| 20 | 4.4 | Integracion entre capas |  | 31.5d | 2027-09-24 | 2027-11-09 | 18, 19 |  | Desarrollador [300%]; Desarrollador en prácticas [50%]; Licencias sofware; Servidores de la empresa; Tester [50%] |
| 21 | 5 | **Testeo de la aplicación** |  | 51.13d | 2027-11-09 | 2028-01-19 | 20 |  |  |
| 22 | 5.1 | Pruebas unitarias |  | 37.88d | 2027-11-09 | 2027-12-31 | 20 | start no earlier than 2027-03-18 | Licencias sofware; Servidores de la empresa; Tester [33%]; Desarrollador [10%]; Desarrollador en prácticas [10%] |
| 23 | 5.2 | Pruebas de integración |  | 34.72d | 2027-11-10 | 2027-12-29 | 22SS+10h |  | Desarrollador [10%]; Desarrollador en prácticas [10%]; Licencias sofware; Servidores de la empresa; Tester [33%] |
| 24 | 5.3 | Pruebas de rendimiento y seguridad |  | 34.72d | 2027-11-10 | 2027-12-29 | 22SS+10h | start no earlier than 2027-03-10 | Desarrollador [10%]; Desarrollador en prácticas [10%]; Licencias sofware; Servidores de la empresa; Tester [33%] |
| 25 | 5.4 | Pruebas de aceptación con el usuario |  | 13.26d | 2027-12-31 | 2028-01-19 | 22, 23, 24 | start no earlier than 2027-04-07 | Licencias sofware; Servidores de la empresa; Tester; Desarrollador [10%]; Desarrollador en prácticas [10%] |
| 26 | 5.5 | Tarea lista para entregar | milestone | 0d | 2028-01-19 | 2028-01-19 | 25 | start no earlier than 2027-03-30 |  |
